# cronograma02

Schedule from MS Project, 2022-08-19 to 2023-04-24.

## Calendars

- Estándar: Mon-Fri 09:00-13:00, 15:00-19:00; Sat-Sun off.

## Schedule

| ID | WBS | Task | Type | Duration | Start | Finish | Predecessors | Baseline start | Baseline finish | Baseline duration | Total slack |
| --- | --- | --- | --- | --- | --- | --- | --- | --- | --- | --- | --- |
| 1 | 1 | **DISEÑO** |  | 110.33d | 2022-11-15 | 2023-04-18 |  | 2022-11-15 | 2023-04-18 | 110.33d | 0d |
| 2 | 1.1 | **Diseño Gráfico** |  | 110.33d | 2022-11-15 | 2023-04-18 |  | 2022-11-15 | 2023-04-18 | 110.33d | 0d |
| 3 | 1.1.1 | Analizar el manual de identidad |  | 5.75d | 2023-01-05 | 2023-01-13 | 5, 9 | 2023-01-05 | 2023-01-13 | 5.75d | 0d |
| 4 | 1.1.2 | Hacer propuestas de diseño sobre la identidad gráfica |  | 11.25d | 2022-11-15 | 2022-11-30 | 81 | 2022-11-15 | 2022-11-30 | 11.25d | 0d |
| 5 | 1.1.3 | Hacer cambios y feedback con IT |  | 6.5d | 2022-12-15 | 2022-12-26 | 11 | 2022-12-15 | 2022-12-26 | 6.5d | 8.42d |
| 6 | 1.1.4 | Hacer cambios y feedback con usuario |  | 16.08d | 2023-03-27 | 2023-04-18 | 12 | 2023-03-27 | 2023-04-18 | 16.08d | 0d |
| 7 | 1.1.5 | Diseño gráfico listo | milestone | 0d | 2023-04-18 | 2023-04-18 | 6 | 2023-04-18 | 2023-04-18 | 0d | 4d |
| 8 | 1.2 | **Diseño UX/UI** |  | 94.25d | 2022-11-15 | 2023-03-27 |  | 2022-11-15 | 2023-03-27 | 94.25d | 3.58d |
| 9 | 1.2.1 | Realizar cambios para diseños intuitivos |  | 14.92d | 2022-12-15 | 2023-01-05 | 11 | 2022-12-15 | 2023-01-05 | 14.92d | 0d |
| 10 | 1.2.2 | Crear plataforma ergonómica |  | 7.67d | 2022-11-15 | 2022-11-25 | 81 | 2022-11-15 | 2022-11-25 | 7.67d | 3.58d |
| 11 | 1.2.3 | Planificar cambios con IT |  | 11.25d | 2022-11-30 | 2022-12-15 | 4, 10 | 2022-11-30 | 2022-12-15 | 11.25d | 0d |
| 12 | 1.2.4 | Hacer pruebas de usuario y usabilidad |  | 19.17d | 2023-02-28 | 2023-03-27 | 39SS, 40SS, 41SS, 42SS, 43SS, 44SS | 2023-02-28 | 2023-03-27 | 19.17d | 0d |
| 13 | 1.2.5 | Diseño UX/UI listo | milestone | 0d | 2023-03-27 | 2023-03-27 | 12 | 2023-03-27 | 2023-03-27 | 0d | 20.08d |
| 14 | 2 | **PROGRAMACIÓN** |  | 172.67d | 2022-08-19 | 2023-04-18 |  | 2022-08-19 | 2023-04-18 | 172.67d | 4d |
| 15 | 2.1 | **Front-end** |  | 40.99d | 2023-01-13 | 2023-03-13 |  | 2023-01-13 | 2023-03-13 | 40.99d | 0d |
| 16 | 2.1.1 | **La vista padre (layout)** |  | 12.83d | 2023-01-13 | 2023-02-01 |  | 2023-01-13 | 2023-02-01 | 12.83d | 0d |
| 17 | 2.1.1.1 | Programar headers |  | 6.42d | 2023-01-13 | 2023-01-23 | 3 | 2023-01-13 | 2023-01-23 | 6.42d | 6.41d |
| 18 | 2.1.1.2 | Determinar menús comunes |  | 12.83d | 2023-01-13 | 2023-02-01 | 3 | 2023-01-13 | 2023-02-01 | 12.83d | 0d |
| 19 | 2.1.2 | **La vista hijo (sub-layouts)** |  | 14.08d | 2023-02-01 | 2023-02-21 |  | 2023-02-01 | 2023-02-21 | 14.08d | 0d |
| 20 | 2.1.2.1 | Diseñar registro |  | 2.92d | 2023-02-06 | 2023-02-09 | 21 | 2023-02-06 | 2023-02-09 | 2.92d | 7.66d |
| 21 | 2.1.2.2 | Diseñar login |  | 3.5d | 2023-02-01 | 2023-02-06 | 17, 18 | 2023-02-01 | 2023-02-06 | 3.5d | 0d |
| 22 | 2.1.2.3 | Diseñar perfil |  | 4.5d | 2023-02-06 | 2023-02-13 | 21 | 2023-02-06 | 2023-02-13 | 4.5d | 6.08d |
| 23 | 2.1.2.4 | Diseñar pacientes |  | 6.42d | 2023-02-06 | 2023-02-15 | 21 | 2023-02-06 | 2023-02-15 | 6.42d | 4.16d |
| 24 | 2.1.2.5 | Diseñar templates |  | 10.58d | 2023-02-06 | 2023-02-21 | 21 | 2023-02-06 | 2023-02-21 | 10.58d | 0d |
| 25 | 2.1.2.6 | Diseñar paciente (c/u) |  | 6.42d | 2023-02-06 | 2023-02-15 | 21 | 2023-02-06 | 2023-02-15 | 6.42d | 4.16d |

Notes:
- 1: Para darle seguimiento a alguna tarea, mueve su comienzo y mantén el vínculo; o mueve su duración. / Segunda grabación, minuto 20.
- 7: preguntar al profe si los hitos se agregan en el wbs también

| ID | WBS | Task | Duration | Start | Finish | Predecessors | Baseline start | Baseline finish | Baseline duration | Total slack | Free slack |
| --- | --- | --- | --- | --- | --- | --- | --- | --- | --- | --- | --- |
| 26 | 2.1.3 | **Forms conectados a endpoints (html)** | 6.5d | 2023-03-03 | 2023-03-13 |  | 2023-03-03 | 2023-03-13 | 6.5d | 30.17d |  |
| 27 | 2.1.3.1 | Programar modals estáticos | 3.5d | 2023-03-08 | 2023-03-13 | 30 | 2023-03-08 | 2023-03-13 | 3.5d | 30.17d |  |
| 28 | 2.1.3.2 | Programar modals dinámicos | 3.5d | 2023-03-03 | 2023-03-08 | 31 | 2023-03-03 | 2023-03-08 | 3.5d | 33.17d |  |
| 29 | 2.1.4 | **Scripts para autogenerar html (js)** | 10.58d | 2023-02-21 | 2023-03-07 |  | 2023-02-21 | 2023-03-07 | 10.58d | 0d |  |
| 30 | 2.1.4.1 | Programar códigos js al cargar la página | 5.58d | 2023-02-28 | 2023-03-07 | 32 | 2023-02-28 | 2023-03-07 | 5.58d | 30.17d | 0d |
| 31 | 2.1.4.2 | Programar códigos js para modificar un modal | 2.58d | 2023-02-28 | 2023-03-02 | 32 | 2023-02-28 | 2023-03-02 | 2.58d | 30.17d | 0d |
| 32 | 2.1.4.3 | Programar API en server | 5d | 2023-02-21 | 2023-02-28 | 20, 22, 23, 24, 25, 51FF | 2023-02-21 | 2023-02-28 | 5d | 0d |  |
| 33 | 2.1.5 | **Botones para editar y/o borrar elementos** | 6.5d | 2023-03-03 | 2023-03-13 |  | 2023-03-03 | 2023-03-13 | 6.5d | 30.17d |  |
| 34 | 2.1.5.1 | Editar/borrar templates | 6.5d | 2023-03-03 | 2023-03-13 | 31 | 2023-03-03 | 2023-03-13 | 6.5d | 30.17d |  |
| 35 | 2.1.5.2 | Editar/borrar pacientes | 6.5d | 2023-03-03 | 2023-03-13 | 31 | 2023-03-03 | 2023-03-13 | 6.5d | 30.17d |  |
| 36 | 2.1.5.3 | Editar/borrar registros | 6.5d | 2023-03-03 | 2023-03-13 | 31 | 2023-03-03 | 2023-03-13 | 6.5d | 30.17d |  |
| 37 | 2.2 | **Back-end** | 150.34d | 2022-08-19 | 2023-03-17 |  | 2022-08-19 | 2023-03-17 | 150.34d | 21.04d |  |
| 38 | 2.2.1 | **Endpoints de páginas** | 12.92d | 2023-02-28 | 2023-03-17 |  | 2023-02-28 | 2023-03-17 | 12.92d | 0d |  |
| 39 | 2.2.1.1 | Programar registro | 6.08d | 2023-02-28 | 2023-03-08 | 32 | 2023-02-28 | 2023-03-08 | 6.08d | 0d |  |
| 40 | 2.2.1.2 | Programar login | 5.42d | 2023-02-28 | 2023-03-07 | 32 | 2023-02-28 | 2023-03-07 | 5.42d | 0d |  |
| 41 | 2.2.1.3 | Programar perfil | 5.83d | 2023-02-28 | 2023-03-08 | 32 | 2023-02-28 | 2023-03-08 | 5.83d | 0d |  |
| 42 | 2.2.1.4 | Programar pacientes | 9d | 2023-02-28 | 2023-03-13 | 32 | 2023-02-28 | 2023-03-13 | 9d | 0d |  |
| 43 | 2.2.1.5 | Programar templates | 12.92d | 2023-02-28 | 2023-03-17 | 32 | 2023-02-28 | 2023-03-17 | 12.92d | 0d |  |
| 44 | 2.2.1.6 | Programar pacientes (c/u) | 3.92d | 2023-02-28 | 2023-03-06 | 32 | 2023-02-28 | 2023-03-06 | 3.92d | 0d |  |
| 45 | 2.2.2 | **Endpoints de forms (input/output)** | 3.58d | 2023-02-28 | 2023-03-03 |  | 2023-02-28 | 2023-03-03 | 3.58d | 30.38d |  |
| 46 | 2.2.2.1 | Info de perfil | 2.58d | 2023-02-28 | 2023-03-02 | 32 | 2023-02-28 | 2023-03-02 | 2.58d | 31.38d |  |
| 47 | 2.2.2.2 | Info del paciente | 2.25d | 2023-02-28 | 2023-03-02 | 32 | 2023-02-28 | 2023-03-02 | 2.25d | 31.71d |  |
| 48 | 2.2.2.3 | Info del template | 3.58d | 2023-02-28 | 2023-03-03 | 32 | 2023-02-28 | 2023-03-03 | 3.58d | 30.38d |  |
| 49 | 2.2.2.4 | Info del registro | 2.25d | 2023-02-28 | 2023-03-02 | 32 | 2023-02-28 | 2023-03-02 | 2.25d | 31.71d |  |

| ID | WBS | Task | Type | Duration | Start | Finish | Predecessors | Baseline start | Baseline finish | Baseline duration | Total slack | Free slack |
| --- | --- | --- | --- | --- | --- | --- | --- | --- | --- | --- | --- | --- |
| 50 | 2.2.3 | **Conexión a base de datos** |  | 3.25d | 2022-08-19 | 2022-08-24 |  | 2022-08-19 | 2022-08-24 | 3.25d | 134.17d |  |
| 51 | 2.2.3.1 | Mongo DB (local) |  | 3.25d | 2022-08-19 | 2022-08-24 |  | 2022-08-19 | 2022-08-24 | 3.25d | 134.17d | 0d |
| 52 | 2.2.3.2 | Mongo DB Atlas (remoto) |  | 3.25d | 2022-08-19 | 2022-08-24 | 51SS | 2022-08-19 | 2022-08-24 | 3.25d | 165.53d | 0d |
| 53 | 2.3 | Programación Lista | milestone | 0d | 2023-04-18 | 2023-04-18 | 58 | 2023-04-18 | 2023-04-18 | 0d | 4d |  |
| 54 | 3 | **HOSTING** |  | 172.67d | 2022-08-19 | 2023-04-18 |  | 2022-08-19 | 2023-04-18 | 172.67d | 4d |  |
| 55 | 3.1 | **Heroku (Host)** |  | 172.67d | 2022-08-19 | 2023-04-18 |  | 2022-08-19 | 2023-04-18 | 172.67d | 4d |  |
| 56 | 3.1.1 | Dar de alta una cuenta |  | 0.65d | 2022-08-24 | 2022-08-24 | 52 | 2022-08-24 | 2022-08-24 | 0.65d | 172.77d |  |
| 57 | 3.1.2 | Crear proyecto en host |  | 0.65d | 2022-08-19 | 2022-08-19 |  | 2022-08-19 | 2022-08-19 | 0.65d | 176.02d |  |
| 58 | 3.1.3 | Subir el código actualizado |  | 1.29d | 2023-04-17 | 2023-04-18 | 39, 40, 41, 42, 44, 46, 47, 48, 49, 43, 6FF, 64 | 2023-04-17 | 2023-04-18 | 1.29d | 0d |  |
| 59 | 3.1.4 | Host listo | milestone | 0d | 2023-04-18 | 2023-04-18 | 58 | 2023-04-18 | 2023-04-18 | 0d | 4d |  |
| 60 | 3.2 | **Mongo DB Atlas (Cluster de datos)** |  | 134.82d | 2022-08-24 | 2023-03-01 |  | 2022-08-24 | 2023-03-01 | 134.82d | 38.6d |  |
| 61 | 3.2.1 | Dar de alta una cuenta |  | 0.65d | 2022-08-24 | 2022-08-24 | 52 | 2022-08-24 | 2022-08-24 | 0.65d | 165.53d | 0d |
| 62 | 3.2.2 | Crear clúster de datos |  | 0.65d | 2022-08-24 | 2022-08-25 | 61 | 2022-08-24 | 2022-08-25 | 0.65d | 165.53d | 0d |
| 63 | 3.2.3 | Obtener clave de la base de datos |  | 0.65d | 2022-08-25 | 2022-08-26 | 62 | 2022-08-25 | 2022-08-26 | 0.65d | 165.53d | 132.22d |
| 64 | 3.2.4 | Integrar clave como dirección de la BD en back-end |  | 0.65d | 2023-02-28 | 2023-03-01 | 63, 32 | 2023-02-28 | 2023-03-01 | 0.65d | 33.31d | 0d |
| 65 | 3.2.5 | Clúster de datos listo | milestone | 0d | 2023-03-01 | 2023-03-01 | 64 | 2023-03-01 | 2023-03-01 | 0d | 38.6d |  |
| 66 | 4 | **LOGÍSTICA** |  | 176.67d | 2022-08-19 | 2023-04-24 |  | 2022-08-19 | 2023-04-24 | 176.67d | 0d |  |
| 67 | 4.1 | **Estudio y Análisis** |  | 19.58d | 2022-08-19 | 2022-09-15 |  | 2022-08-19 | 2022-09-15 | 19.58d | 0d |  |
| 68 | 4.1.1 | Realizar estudio de mercado |  | 13.08d | 2022-08-29 | 2022-09-15 | 69 | 2022-08-29 | 2022-09-15 | 13.08d | 0d |  |
| 69 | 4.1.2 | Obtener la opinión de los clientes |  | 3.58d | 2022-08-23 | 2022-08-29 | 71 | 2022-08-23 | 2022-08-29 | 3.58d | 0d |  |
| 70 | 4.1.3 | Redactar análisis de opinión |  | 5.83d | 2022-08-29 | 2022-09-06 | 69 | 2022-08-29 | 2022-09-06 | 5.83d | 7.25d |  |
| 71 | 4.1.4 | Definir las estrategias necesarias |  | 2.92d | 2022-08-19 | 2022-08-23 |  | 2022-08-19 | 2022-08-23 | 2.92d | 0d |  |
| 72 | 4.2 | **Administración** |  | 157.09d | 2022-09-15 | 2023-04-24 |  | 2022-09-15 | 2023-04-24 | 157.09d | 0d |  |
| 73 | 4.2.1 | **Planificación** |  | 36.83d | 2022-09-15 | 2022-11-07 |  | 2022-09-15 | 2022-11-07 | 36.83d | 0d |  |
| 74 | 4.2.1.1 | Definición de objetivos y metas |  | 3.58d | 2022-09-20 | 2022-09-26 | 75 | 2022-09-20 | 2022-09-26 | 3.58d | 0d |  |
| 75 | 4.2.1.2 | Definición del marco teórico |  | 2.92d | 2022-09-15 | 2022-09-20 | 70, 68 | 2022-09-15 | 2022-09-20 | 2.92d | 0d |  |
| 76 | 4.2.1.3 | Identificar los eventos que podrían ocurrir en el futuro |  | 3.58d | 2022-10-12 | 2022-10-17 | 80 | 2022-10-12 | 2022-10-17 | 3.58d | 120.26d | 0d |
| 77 | 4.2.1.4 | Realizar manual y protocolos para resolver problemas a corto, mediano y largo plazo |  | 14.58d | 2022-10-17 | 2022-11-07 | 76 | 2022-10-17 | 2022-11-07 | 14.58d | 120.26d |  |

| ID | WBS | Task | Type | Duration | Start | Finish | Predecessors | Baseline start | Baseline finish | Baseline duration | Total slack | Free slack |
| --- | --- | --- | --- | --- | --- | --- | --- | --- | --- | --- | --- | --- |
| 78 | 4.2.2 | **Organización** |  | 26.01d | 2022-10-10 | 2022-11-15 |  | 2022-10-10 | 2022-11-15 | 26.01d | 0d |  |
| 79 | 4.2.2.1 | Dividir carga de trabajo |  | 4.17d | 2022-10-21 | 2022-10-27 | 84 | 2022-10-21 | 2022-10-27 | 4.17d | 0d |  |
| 80 | 4.2.2.2 | Selección de autoridad administrativa |  | 1.92d | 2022-10-10 | 2022-10-12 | 91 | 2022-10-10 | 2022-10-12 | 1.92d | 0d |  |
| 81 | 4.2.2.3 | Proveer de materiales y recursos a cada sector |  | 12.92d | 2022-10-27 | 2022-11-15 | 79 | 2022-10-27 | 2022-11-15 | 12.92d | 0d |  |
| 82 | 4.2.2.4 | Realizar organigrama de la empresa |  | 5.25d | 2022-10-10 | 2022-10-17 | 91 | 2022-10-10 | 2022-10-17 | 5.25d | 135.09d | 0d |
| 83 | 4.2.2.5 | Organización lista | milestone | 0d | 2022-10-17 | 2022-10-17 | 82 | 2022-10-17 | 2022-10-17 | 0d | 135.09d |  |
| 84 | 4.2.3 | Planificar el proyecto |  | 7d | 2022-10-12 | 2022-10-21 | 80 | 2022-10-12 | 2022-10-21 | 7d | 0d |  |
| 85 | 4.2.4 | Evaluación y análisis final de resultados obtenidos |  | 4d | 2023-04-18 | 2023-04-24 | 58 | 2023-04-18 | 2023-04-24 | 4d | 0d |  |
| 86 | 4.3 | **Estudio y análisis** |  | 20.75d | 2022-09-26 | 2022-10-24 |  | 2022-09-26 | 2022-10-24 | 20.75d | 0d |  |
| 87 | 4.3.1 | **Consultoría y análisis económico** |  | 5.42d | 2022-09-26 | 2022-10-03 |  | 2022-09-26 | 2022-10-03 | 5.42d | 0d |  |
| 88 | 4.3.1.1 | Crear el presupuesto |  | 3.5d | 2022-09-26 | 2022-09-29 | 74 | 2022-09-26 | 2022-09-29 | 3.5d | 1.92d |  |
| 89 | 4.3.1.2 | Hacer proyección de ventas |  | 5.42d | 2022-09-26 | 2022-10-03 | 74 | 2022-09-26 | 2022-10-03 | 5.42d | 0d |  |
| 90 | 4.3.2 | **Plan financiero** |  | 4.83d | 2022-10-03 | 2022-10-10 |  | 2022-10-03 | 2022-10-10 | 4.83d | 0d |  |
| 91 | 4.3.2.1 | Administración de financiaciones e inversiones |  | 4.83d | 2022-10-03 | 2022-10-10 | 88, 89 | 2022-10-03 | 2022-10-10 | 4.83d | 0d |  |
| 92 | 4.3.2.2 | Analizar las problemáticas financieras |  | 2.58d | 2022-10-03 | 2022-10-06 | 88, 89 | 2022-10-03 | 2022-10-06 | 2.58d | 142.59d |  |
| 93 | 4.3.3 | Crear las estrategias |  | 5d | 2022-10-17 | 2022-10-24 | 76 | 2022-10-17 | 2022-10-24 | 5d | 129.84d |  |
